# GTEPT Práctica_2_ini_2022

Schedule from MS Project, 2022-04-25 to 2022-10-27, costs in €, A marks actual dates.

## Calendars

- Estándar: Mon-Fri 09:00-13:00, 15:00-19:00; Sat-Sun off. Exceptions (off unless hours are given): 2022-05-02 (Día del trabajador).

## Resources

| Resource | Group | Rate |
| --- | --- | --- |
| César Pérez (Director Proyecto) | Director Proyecto | 75 |
| Ramón Nori (Jefe Funcional) | Jefe Funcional | 75 |
| Salvador López (Analista Funcional ) | Analista Funcional | 75 |
| Román Blanco (Jefe de Infrastructura) | Jefe de Infrastructura | 75 |
| Marcos Francés (Jefe de Desarrollo) | Jefe de Desarrollo | 75 |
| Desarrollador 1 (TBD) | (TBD) | 165 |
| Sandra Volta (ABD) | ABD | 75 |
| Kim Benson (Jefe de Pruebas) | Jefe de Pruebas | 75 |
| Tomás Gómez (Pruebas) | Pruebas | 75 |
| Desarrollador 2 (TBD) | (TBD) | 175 |
| Desarrollador 3 (TBD) | (TBD) | 175 |

## Schedule

| ID | WBS | Task | Duration | Start | Finish | Predecessors | Complete | Remaining | Baseline start | Baseline finish | Baseline duration | Total slack | Free slack | Resources | Work | Actual work | Cost | Baseline cost | Actual cost |
| --- | --- | --- | --- | --- | --- | --- | --- | --- | --- | --- | --- | --- | --- | --- | --- | --- | --- | --- | --- |
| 1 | 1 | **Proyecto tienda web** | 132.89d | 2022-04-25 A | 2022-10-27 |  | 2% | 129.92d | 2022-04-25 | 2022-10-27 | 132.89d | 0d |  |  | 8276.8h | 148h | 825,091.46 | 824,791.46 | 11,100 |
| 2 | 1.1 | **Dirección del proyecto** | 100d | 2022-06-09 | 2022-10-27 |  |  |  | 2022-06-09 | 2022-10-27 | 100d | 0d |  |  | 800h |  | 60,000 | 60,000 |  |
| 3 | 1.1.1 | Dirigir proyecto | 100d | 2022-06-09 | 2022-10-27 | 59FF |  |  | 2022-06-09 | 2022-10-27 | 100d | 0d |  | César Pérez (Director Proyecto) | 800h |  | 60,000 | 60,000 |  |
| 4 | 1.2 | **Requisitos del Sistema** | 13d | 2022-04-25 A | 2022-05-12 |  | 63% | 4.79d | 2022-04-25 | 2022-05-12 | 13d | 4.75d |  |  | 284h | 148h | 21,300 | 21,000 | 11,100 |
| 5 | 1.2.1 | Identificar los requisitos del negocio | 4d | 2022-04-25 A | 2022-04-28 A |  | 100% |  | 2022-04-25 | 2022-04-28 | 4d |  |  | Ramón Nori (Jefe Funcional); Salvador López (Analista Funcional ) | 68h | 68h | 5,100 | 4,800 | 5,100 |
| 6 | 1.2.2 | Diseñar el flujo de procesos de negocio | 2d | 2022-04-29 A | 2022-05-03 A | 5 | 100% |  | 2022-04-29 | 2022-05-03 | 2d |  |  | Ramón Nori (Jefe Funcional); Salvador López (Analista Funcional ) | 32h | 32h | 2,400 | 2,400 | 2,400 |
| 7 | 1.2.3 | Finalizar los requisitos técnicos | 6d | 2022-04-25 A | 2022-05-03 A |  | 100% |  | 2022-04-25 | 2022-05-03 | 6d |  |  | Román Blanco (Jefe de Infrastructura) | 48h | 48h | 3,600 | 3,600 | 3,600 |
| 8 | 1.2.4 | Definir los requisitos operativos | 5d | 2022-05-04 | 2022-05-10 | 6, 7 |  |  | 2022-05-04 | 2022-05-10 | 5d | 0d |  | Ramón Nori (Jefe Funcional); Salvador López (Analista Funcional ); Román Blanco (Jefe de Infrastructura) | 120h |  | 9,000 | 9,000 |  |
| 9 | 1.2.5 | Determinar las necesidades de infraestructura técnica | 2d | 2022-05-11 | 2022-05-12 | 7, 8 |  |  | 2022-05-11 | 2022-05-12 | 2d | 4.75d | 0d | Román Blanco (Jefe de Infrastructura) | 16h |  | 1,200 | 1,200 |  |
| 10 | 1.3 | **Requisitos de Software** | 20d | 2022-05-11 | 2022-06-07 |  |  |  | 2022-05-11 | 2022-06-07 | 20d | 0d |  |  | 320h |  | 24,000 | 24,000 |  |
| 11 | 1.3.1 | **Crear requisitos Funcionales** | 20d | 2022-05-11 | 2022-06-07 | 5, 6, 8 |  |  | 2022-05-11 | 2022-06-07 | 20d | 0d |  |  | 208h |  | 15,600 | 15,600 |  |
| 12 | 1.3.1.1 | Captura del perfil del cliente | 4d | 2022-05-19 | 2022-05-24 |  |  |  | 2022-05-19 | 2022-05-24 | 4d | 3d | 0d | Ramón Nori (Jefe Funcional) | 32h |  | 2,400 | 2,400 |  |
| 13 | 1.3.1.2 | Vista y búsqueda del catálogo de productos | 6d | 2022-05-11 | 2022-05-18 |  |  |  | 2022-05-11 | 2022-05-18 | 6d | 0d |  | Ramón Nori (Jefe Funcional) | 48h |  | 3,600 | 3,600 |  |
| 14 | 1.3.1.3 | Carro de compra | 3d | 2022-05-25 | 2022-05-27 | 13 |  |  | 2022-05-25 | 2022-05-27 | 3d | 0d |  | Ramón Nori (Jefe Funcional) | 24h |  | 1,800 | 1,800 |  |
| 15 | 1.3.1.4 | Pago electrónico | 6d | 2022-05-11 | 2022-05-18 |  |  |  | 2022-05-11 | 2022-05-18 | 6d | 7d |  | Salvador López (Analista Funcional ) | 48h |  | 3,600 | 3,600 |  |
| 16 | 1.3.1.5 | Toma del pedido | 4d | 2022-05-30 | 2022-06-02 | 12, 13, 14, 15 |  |  | 2022-05-30 | 2022-06-02 | 4d | 0d |  | Ramón Nori (Jefe Funcional) | 32h |  | 2,400 | 2,400 |  |
| 17 | 1.3.1.6 | Comprobar historial del pedido | 3d | 2022-06-03 | 2022-06-07 | 16 |  |  | 2022-06-03 | 2022-06-07 | 3d | 0d |  | Ramón Nori (Jefe Funcional) | 24h |  | 1,800 | 1,800 |  |
| 18 | 1.3.2 | Requisitos de datos | 3d | 2022-05-25 | 2022-05-27 | 12, 13 |  |  | 2022-05-25 | 2022-05-27 | 3d | 7d |  | Salvador López (Analista Funcional ) | 24h |  | 1,800 | 1,800 |  |
| 19 | 1.3.3 | Requisitos de la interfaz del ERP | 7d | 2022-05-30 | 2022-06-07 | 16SS |  |  | 2022-05-30 | 2022-06-07 | 7d | 0d |  | Salvador López (Analista Funcional ) | 56h |  | 4,200 | 4,200 |  |
| 20 | 1.3.4 | Requisitos de la Interfaz de Usuario | 4d | 2022-05-19 | 2022-05-24 | 11SS |  |  | 2022-05-19 | 2022-05-24 | 4d | 10d |  | Salvador López (Analista Funcional ) | 32h |  | 2,400 | 2,400 |  |
| 21 | 1.4 | **Diseño detallado** | 26.5d | 2022-06-08 | 2022-07-14 | 10 |  |  | 2022-06-08 | 2022-07-14 | 26.5d | 0d |  |  | 776h |  | 77,220 | 77,220 |  |
| 22 | 1.4.1 | Diseño de la captura del perfil del cliente | 13.5d | 2022-06-08 | 2022-06-27 |  |  |  | 2022-06-08 | 2022-06-27 | 13.5d | 3d | 0d | Marcos Francés (Jefe de Desarrollo); Ramón Nori (Jefe Funcional) | 108h |  | 8,100 | 8,100 |  |
| 23 | 1.4.2 | Diseño de la vista y búsqueda del catálogo de productos | 6.75d | 2022-06-08 | 2022-06-16 |  |  |  | 2022-06-08 | 2022-06-16 | 6.75d | 0d |  | Desarrollador 1 (TBD); Ramón Nori (Jefe Funcional) | 108h |  | 12,960 | 12,960 |  |
| 24 | 1.4.3 | Diseño del carro de compra | 6d | 2022-06-16 | 2022-06-30 | 23 |  |  | 2022-06-16 | 2022-06-30 | 6d | 0d |  | Desarrollador 1 (TBD); Ramón Nori (Jefe Funcional) | 48h |  | 5,760 | 5,760 |  |
| 25 | 1.4.4 | Diseño del pago electrónico | 3d | 2022-06-08 | 2022-06-10 |  |  |  | 2022-06-08 | 2022-06-10 | 3d | 13.5d | 0d | Desarrollador 2 (TBD); Desarrollador 3 (TBD) | 48h |  | 8,400 | 8,400 |  |
| 26 | 1.4.5 | Diseño de la toma del pedido | 8d | 2022-06-30 | 2022-07-12 | 22, 23, 24, 25 |  |  | 2022-06-30 | 2022-07-12 | 8d | 8d | 0d | Marcos Francés (Jefe de Desarrollo); Ramón Nori (Jefe Funcional) | 128h |  | 9,600 | 9,600 |  |
| 27 | 1.4.6 | Diseño de comprobación historial del pedido | 2d | 2022-07-12 | 2022-07-14 | 26 |  |  | 2022-07-12 | 2022-07-14 | 2d | 12d | 0d | Marcos Francés (Jefe de Desarrollo); Ramón Nori (Jefe Funcional) | 32h |  | 2,400 | 2,400 |  |
| 28 | 1.4.7 | Diseño lógico y físico del modelo de datos | 9d | 2022-06-08 | 2022-06-20 |  |  |  | 2022-06-08 | 2022-06-20 | 9d | 13d | 0d | Sandra Volta (ABD); Salvador López (Analista Funcional ) | 144h |  | 10,800 | 10,800 |  |
| 29 | 1.4.8 | Diseño de la interfaz del ERP | 10d | 2022-06-30 | 2022-07-14 | 22, 23, 24, 25 |  |  | 2022-06-30 | 2022-07-14 | 10d | 0d |  | Desarrollador 1 (TBD); Salvador López (Analista Funcional ) | 160h |  | 19,200 | 19,200 |  |

| ID | WBS | Task | Duration | Start | Finish | Predecessors | Baseline start | Baseline finish | Baseline duration | Total slack | Free slack | Resources | Work | Cost | Baseline cost |
| --- | --- | --- | --- | --- | --- | --- | --- | --- | --- | --- | --- | --- | --- | --- | --- |
| 30 | 1.5 | **Plan de pruebas** | 47.5d | 2022-06-08 | 2022-08-12 |  | 2022-06-08 | 2022-08-12 | 47.5d | 25.5d |  |  | 448h | 33,600 | 33,600 |
| 31 | 1.5.1 | Establecer los requisitos de las pruebas | 7d | 2022-06-08 | 2022-06-16 | 11 | 2022-06-08 | 2022-06-16 | 7d | 25.5d | 19.5d | Kim Benson (Jefe de Pruebas); Tomás Gómez (Pruebas) | 112h | 8,400 | 8,400 |
| 32 | 1.5.2 | Crear el plan y los casos de prueba | 10d | 2022-07-14 | 2022-07-28 | 21, 31 | 2022-07-14 | 2022-07-28 | 10d | 13d | 0d | Kim Benson (Jefe de Pruebas); Tomás Gómez (Pruebas) | 160h | 12,000 | 12,000 |
| 33 | 1.5.3 | Escribir los códigos de pruebas | 11d | 2022-07-28 | 2022-08-12 | 32 | 2022-07-28 | 2022-08-12 | 11d | 54.39d |  | Tomás Gómez (Pruebas); Kim Benson (Jefe de Pruebas) | 176h | 13,200 | 13,200 |
| 34 | 1.6 | **Infraestructura técnica** | 104d | 2022-05-13 | 2022-10-05 |  | 2022-05-13 | 2022-10-05 | 104d | 4.75d |  |  | 868.8h | 65,160 | 65,160 |
| 35 | 1.6.1 | Crear el entorno de desarrollo | 20d | 2022-05-13 | 2022-06-09 | 9 | 2022-05-13 | 2022-06-09 | 20d | 4.75d | 0d | Román Blanco (Jefe de Infrastructura) | 160h | 12,000 | 12,000 |
| 36 | 1.6.2 | Crear el entorno de pruebas | 34.2d | 2022-06-15 | 2022-08-02 | 35 | 2022-06-15 | 2022-08-02 | 34.2d | 57.29d | 0d | Román Blanco (Jefe de Infrastructura) | 273.6h | 20,520 | 20,520 |
| 37 | 1.6.3 | Soporte del entorno de desarrollo | 3.8d | 2022-06-10 | 2022-06-15 | 35 | 2022-06-10 | 2022-06-15 | 3.8d | 15.2d | 0d | Román Blanco (Jefe de Infrastructura) | 30.4h | 2,280 | 2,280 |
| 38 | 1.6.4 | Soporte del entorno de desarrollo y pruebas | 46d | 2022-08-03 | 2022-10-05 | 37 | 2022-08-03 | 2022-10-05 | 46d | 15.89d |  | Román Blanco (Jefe de Infrastructura) | 368h | 27,600 | 27,600 |
| 39 | 1.6.5 | Soporte de bases de datos | 4.6d | 2022-08-03 | 2022-08-09 | 36 | 2022-08-03 | 2022-08-09 | 4.6d | 57.29d |  | Sandra Volta (ABD) | 36.8h | 2,760 | 2,760 |
| 40 | 1.7 | **Desarrollo y prueba de componentes** | 42.75d | 2022-06-16 | 2022-08-16 | 35 | 2022-06-16 | 2022-08-16 | 42.75d | 0d |  |  | 1180h | 140,660 | 140,660 |
| 41 | 1.7.1 | Construir la captura del perfil del cliente | 13d | 2022-06-27 | 2022-07-14 | 22 | 2022-06-27 | 2022-07-14 | 13d | 6d | 0d | Desarrollador 2 (TBD) | 104h | 18,200 | 18,200 |
| 42 | 1.7.2 | Construir la vista y búsqueda del catálogo de productos | 12d | 2022-06-16 | 2022-07-04 | 23 | 2022-06-16 | 2022-07-04 | 12d | 0d |  | Desarrollador 3 (TBD) | 96h | 16,800 | 16,800 |
| 43 | 1.7.3 | Construir el carro de compra | 7d | 2022-07-04 | 2022-07-13 | 24, 42 | 2022-07-04 | 2022-07-13 | 7d | 0d |  | Sandra Volta (ABD) | 56h | 4,200 | 4,200 |
| 44 | 1.7.4 | Construir el pago electrónico | 6d | 2022-06-16 | 2022-06-24 | 25 | 2022-06-16 | 2022-06-24 | 6d | 13d |  | Marcos Francés (Jefe de Desarrollo) | 48h | 3,600 | 3,600 |
| 45 | 1.7.5 | Construir la toma del pedido | 12d | 2022-07-14 | 2022-08-01 | 26, 41, 42, 43, 44 | 2022-07-14 | 2022-08-01 | 12d | 6d |  | Desarrollador 2 (TBD); Desarrollador 3 (TBD) | 192h | 33,600 | 33,600 |
| 46 | 1.7.6 | Construir la comprobación historial del pedido | 6d | 2022-07-14 | 2022-07-22 | 27 | 2022-07-14 | 2022-07-22 | 6d | 12d |  | Marcos Francés (Jefe de Desarrollo) | 48h | 3,600 | 3,600 |
| 47 | 1.7.7 | Construir el modelo de datos lógico y físico | 15.5d | 2022-06-21 | 2022-07-21 | 28 | 2022-06-21 | 2022-07-21 | 15.5d | 13d |  | Sandra Volta (ABD) | 124h | 9,300 | 9,300 |
| 48 | 1.7.8 | Construir la interfaz del ERP | 18d | 2022-07-14 | 2022-08-09 | 29 | 2022-07-14 | 2022-08-09 | 18d | 0d |  | Desarrollador 1 (TBD) | 144h | 23,760 | 23,760 |
| 49 | 1.7.9 | Soporte de desarrollo y de las pruebas | 23d | 2022-07-14 | 2022-08-16 | 21 | 2022-07-14 | 2022-08-16 | 23d | 52.39d |  | Ramón Nori (Jefe Funcional); Salvador López (Analista Funcional ) | 368h | 27,600 | 27,600 |
| 50 | 1.8 | **Pruebas** | 47d | 2022-07-22 | 2022-09-27 |  | 2022-07-22 | 2022-09-27 | 47d | 0d |  |  | 2176h | 244,400.02 | 244,400.02 |
| 51 | 1.8.1 | **Ejecutar pruebas de montaje** | 17d | 2022-07-22 | 2022-08-16 | 31 | 2022-07-22 | 2022-08-16 | 17d | 0d |  |  | 256h | 30,800 | 30,800 |
| 52 | 1.8.1.1 | Ejecutar pruebas de fase 1 | 12d | 2022-07-22 | 2022-08-09 | 42, 43, 44 | 2022-07-22 | 2022-08-09 | 12d | 0d |  | Marcos Francés (Jefe de Desarrollo) | 96h | 7,200 | 7,200 |
| 53 | 1.8.1.2 | Ejecutar pruebas de fase 2 | 5d | 2022-08-09 | 2022-08-16 | 44, 45, 46, 47, 48, 52 | 2022-08-09 | 2022-08-16 | 5d | 0d |  | Marcos Francés (Jefe de Desarrollo); Desarrollador 1 (TBD); Desarrollador 2 (TBD); Desarrollador 3 (TBD) | 160h | 23,600 | 23,600 |
| 54 | 1.8.2 | Ejecutar pruebas del sistema | 20d | 2022-08-16 | 2022-09-13 | 32, 51, 31 | 2022-08-16 | 2022-09-13 | 20d | 0d |  | Kim Benson (Jefe de Pruebas); Tomás Gómez (Pruebas); Desarrollador 1 (TBD); Desarrollador 2 (TBD); Desarrollador 3 (TBD); Marcos Francés (Jefe de Desarrollo); Ramón Nori (Jefe Funcional); Salvador López (Analista Funcional ) | 1280h | 142,400.02 | 142,400.02 |
| 55 | 1.8.3 | Validar las pruebas | 10d | 2022-09-13 | 2022-09-27 | 54 | 2022-09-13 | 2022-09-27 | 10d | 0d |  | Kim Benson (Jefe de Pruebas); Tomás Gómez (Pruebas); Desarrollador 1 (TBD); Desarrollador 2 (TBD); Desarrollador 3 (TBD); Marcos Francés (Jefe de Desarrollo); Ramón Nori (Jefe Funcional); Salvador López (Analista Funcional ) | 640h | 71,200.01 | 71,200.01 |

| ID | WBS | Task | Duration | Start | Finish | Predecessors | Baseline start | Baseline finish | Baseline duration | Total slack | Resources | Work | Cost | Baseline cost |
| --- | --- | --- | --- | --- | --- | --- | --- | --- | --- | --- | --- | --- | --- | --- |
| 56 | 1.9 | **Despliegue** | 22.39d | 2022-09-27 | 2022-10-27 | 50 | 2022-09-27 | 2022-10-27 | 22.39d | 0d |  | 1424h | 158,751.44 | 158,751.44 |
| 57 | 1.9.1 | Implantación | 10d | 2022-09-27 | 2022-10-11 |  | 2022-09-27 | 2022-10-11 | 10d | 0d | Kim Benson (Jefe de Pruebas); Tomás Gómez (Pruebas); Desarrollador 1 (TBD); Desarrollador 2 (TBD); Desarrollador 3 (TBD); Marcos Francés (Jefe de Desarrollo); Ramón Nori (Jefe Funcional); Salvador López (Analista Funcional ) | 640h | 71,200.01 | 71,200.01 |
| 58 | 1.9.2 | Despliegue a producción | 1.14d | 2022-10-11 | 2022-10-12 | 57 | 2022-10-11 | 2022-10-12 | 1.14d | 0d | Desarrollador 1 (TBD); Desarrollador 2 (TBD); Desarrollador 3 (TBD); Kim Benson (Jefe de Pruebas); Marcos Francés (Jefe de Desarrollo); Ramón Nori (Jefe Funcional); Salvador López (Analista Funcional ) | 64h | 7,451.43 | 7,451.43 |
| 59 | 1.9.3 | Revisión del proyecto | 11.25d | 2022-10-12 | 2022-10-27 | 58 | 2022-10-12 | 2022-10-27 | 11.25d | 0d | Desarrollador 1 (TBD); Desarrollador 2 (TBD); Desarrollador 3 (TBD); Kim Benson (Jefe de Pruebas); Marcos Francés (Jefe de Desarrollo); Ramón Nori (Jefe Funcional); Salvador López (Analista Funcional ); Román Blanco (Jefe de Infrastructura) | 720h | 80,100 | 80,100 |
